# Project1 - 00H15 - 29Out2023

Schedule from MS Project, 2023-08-08 to 2024-06-30, status date 2023-08-01, costs in €, A marks actual dates.

## Calendars

- Standard: Mon-Sun 08:00-12:00, 13:00-17:00. Exceptions (off unless hours are given): 2023-08-15 08:00-12:00, 13:00-17:00 (Ascenção de Nossa Senhora, recurring), 2023-10-05 (Implementação da Republica), 2023-11-01 (Dia de todos os santos), 2023-12-01 (Restauração da independencia), 2023-12-08 (Dia da Imaculação Conceição), 2023-12-25 (Natal), 2024-01-01 (Ano novo), 2024-02-13 (Carnaval), 2024-03-29 (Sexta-feira Santa), 2024-04-25 (25 de Abril), 2024-05-01 (Dia do trabalhador), 2024-05-30 (Corpo de Deus), 2024-06-10 (Dia de Portugal).

## Resources

| Resource | Group | Unit | Rate |
| --- | --- | --- | --- |
| Gestor do Projeto - Pedro Oliveira | Gestão de Projetos |  | 15 |
| Analistas de Requisitos - Rita Pereira | Gestão de Projetos |  | 10 |
| Web Designer 01 (Chefe) - Tiago Fernandes | Design |  | 10 |
| Web Designer 02 - Ana Costa | Design |  | 9 |
| Desenvolvedores Back-End 01 (Chefe) - Miguel Sousa | Desenvolvimento Back-End |  | 9 |
| Desenvolvedores Back-End 02 - Tiago Karchenko | Desenvolvimento Back-End |  | 7 |
| Desenvolvedores Back-End 03 - William Ferreira | Desenvolvimento Back-End |  | 7 |
| Desenvolvedores Front-End 01 (Chefe) - João Costa | Desenvolvimento Front-End |  | 9 |
| Desenvolvedores Front-End 02 - Pedro Soares | Desenvolvimento Front-End |  | 6 |
| Desenvolvedores Front-End 03 - Pedro Almeida | Desenvolvimento Front-End |  | 6 |
| Especialista em Segurança - Lars Johansson | Segurança Informática |  | 10 |
| Especialistas em Integração de Sistemas - Emily Mitchell | Gestão de Sistemas |  | 8 |
| Equipamento de Escritório - Geral | Despesa Geral | Unidade | 50 |
| Computadores (com monitor, mousse, etc...) | Despesa Geral | Unidade | 100 |
| Serviço de Internet - Empresas | Despesa Geral | Mensal | 70 |
| Eletricidade | Despesa Geral | Mensal | 60 |
| Software de Sistema Integrado | Gestão de Sistemas |  |  |
| Ferramenta de Segurança Informática | Segurança Informática |  |  |
| Ferramentas de Teste | Desenvolvimento de Software |  |  |
| Serviço de Hospedagem | Gestão de Sistemas |  |  |
| Ferramenta de Desenvolvimento de Código | Desenvolvimento de Software |  |  |
| Ferramenta de Base de Dados | Gestão de Sistemas |  |  |
| Ferramenta de Gestão de Sistemas | Gestão de Sistemas |  |  |

## Schedule

| ID | WBS | Task | Duration | Start | Finish | Predecessors | Complete | Remaining | Baseline start | Baseline finish | Baseline duration | Total slack | Constraint | Resources | Work | Actual work | Cost | Baseline cost | Actual cost |
| --- | --- | --- | --- | --- | --- | --- | --- | --- | --- | --- | --- | --- | --- | --- | --- | --- | --- | --- | --- |
| 1 | 1 | **Projeto de Desenvolvimento de um Site - Eletroártica:** | 316d | 2023-08-08 A | 2024-06-30 |  | 99% | 0d | 2023-08-08 | 2024-06-30 | 315.43d | 0d |  |  | 8556.45h | 8556.45h | 138,932.1 | 300,000 | 138,594.1 |
| 2 | 1.1 | **Requisitos e Plano de Projeto:** | 119d | 2023-08-08 A | 2023-12-07 A |  | 100% |  | 2023-08-08 | 2023-12-07 | 119d |  |  | Gestor do Projeto - Pedro Oliveira; Analistas de Requisitos - Rita Pereira [75%]; Especialistas em Integração de Sistemas - Emily Mitchell; Desenvolvedores Back-End 01 (Chefe) - Miguel Sousa; Desenvolvedores Front-End 01 (Chefe) - João Costa | 3805.75h | 3805.75h | 55,760.5 | 118,829.9 | 55,760.5 |
| 3 | 1.1.1 | **Levantamento de Requisitos** | 0.5d | 2023-08-08 A | 2023-08-08 A |  | 100% |  | 2023-08-08 | 2023-08-08 | 0.5d |  |  | Analistas de Requisitos - Rita Pereira [75%]; Especialistas em Integração de Sistemas - Emily Mitchell; Gestor do Projeto - Pedro Oliveira | 11h | 11h | 524 | 1,058.5 | 524 |
| 4 | 1.1.1.1 | Coleta de requisitos detalhados do cliente, incluindo funcionalidades, integrações e requisitos de segurança. | 0.5d | 2023-08-08 A | 2023-08-08 A |  | 100% |  | 2023-08-08 | 2023-08-08 | 0.5d |  | start no earlier than 2023-08-08 | Computadores (com monitor, mousse, etc...) [1 Unidade]; Eletricidade [1 Mensal]; Equipamento de Escritório - Geral [1 Unidade]; Serviço de Internet - Empresas [1 Mensal]; Ferramenta de Gestão de Sistemas [0.1%] |  |  | 400 | 798.07 | 400 |
| 5 | 1.1.2 | **Análise Inicial de Requisitos** | 9d | 2023-08-17 A | 2023-08-25 A | 3 | 100% |  | 2023-08-17 | 2023-08-25 | 9d |  |  | Analistas de Requisitos - Rita Pereira [75%]; Gestor do Projeto - Pedro Oliveira | 126h | 126h | 2,350 | 4,935.45 | 2,350 |
| 6 | 1.1.2.1 | Analise de requisitos iniciais enviados pelo cliente para entender as necessidades do projeto. | 7d | 2023-08-17 A | 2023-08-25 A | 4 | 100% |  | 2023-08-17 | 2023-08-25 | 7d |  | finish no earlier than 2023-08-25 | Computadores (com monitor, mousse, etc...) [1 Unidade]; Eletricidade [1 Mensal]; Equipamento de Escritório - Geral [1 Unidade]; Ferramenta de Gestão de Sistemas [0.1%]; Serviço de Internet - Empresas [1 Mensal] |  |  | 430 | 903.08 | 430 |
| 7 | 1.1.3 | **Definição de Requisitos Prioritários** | 4.12d | 2023-08-28 A | 2023-09-01 A | 5 | 100% |  | 2023-08-28 | 2023-09-01 | 4.12d |  |  | Analistas de Requisitos - Rita Pereira [75%] | 24.75h | 24.75h | 827.5 | 1,737.91 | 827.5 |
| 8 | 1.1.3.1 | Identificação e priorização dos requisitos específicos a serem abordados. | 4.12d | 2023-08-28 A | 2023-09-01 A | 5 | 100% |  | 2023-08-28 | 2023-09-01 | 4.12d |  | start no earlier than 2023-08-28 | Computadores (com monitor, mousse, etc...) [1 Unidade]; Eletricidade [1 Mensal]; Equipamento de Escritório - Geral [1 Unidade]; Ferramenta de Gestão de Sistemas [0.1%]; Serviço de Internet - Empresas [1 Mensal] |  |  | 430 | 903.08 | 430 |
| 9 | 1.1.4 | **Definição da Estrutura** | 10d | 2023-09-04 A | 2023-09-13 A | 7 | 100% |  | 2023-09-04 | 2023-09-13 | 10d |  |  | Especialistas em Integração de Sistemas - Emily Mitchell; Gestor do Projeto - Pedro Oliveira | 160h | 160h | 2,290 | 4,809.44 | 2,290 |
| 10 | 1.1.4.1 | Detalhamento do projeto, incluindo funcionalidades, recursos e limitações. | 8d | 2023-09-04 A | 2023-09-13 A | 7 | 100% |  | 2023-09-04 | 2023-09-13 | 8d |  | start no earlier than 2023-09-04 | Computadores (com monitor, mousse, etc...) [1 Unidade]; Eletricidade [1 Mensal]; Equipamento de Escritório - Geral [1 Unidade]; Ferramenta de Base de Dados [0.1%]; Ferramenta de Desenvolvimento de Código [0.1%]; Ferramenta de Gestão de Sistemas [0.1%]; Serviço de Hospedagem [0.1%]; Serviço de Internet - Empresas [1 Mensal]; Software de Sistema Integrado [0.1%] |  |  | 350 | 735.07 | 350 |
| 11 | 1.1.5 | **Identificação da Partes Interessadas** | 14d | 2023-09-14 A | 2023-09-27 A | 9 | 100% |  | 2023-09-14 | 2023-09-27 | 14d |  |  | Analistas de Requisitos - Rita Pereira [75%]; Especialistas em Integração de Sistemas - Emily Mitchell | 196h | 196h | 2,216 | 4,654.02 | 2,216 |
| 12 | 1.1.5.1 | Identificação das partes interessadas no projeto, incluindo o cliente e outros envolvidos. | 10d | 2023-09-14 A | 2023-09-27 A | 9 | 100% |  | 2023-09-14 | 2023-09-27 | 10d |  | finish no earlier than 2023-09-27 | Computadores (com monitor, mousse, etc...) [1 Unidade]; Eletricidade [1 Mensal]; Equipamento de Escritório - Geral [1 Unidade]; Ferramenta de Gestão de Sistemas [0.1%]; Serviço de Internet - Empresas [1 Mensal]; Software de Sistema Integrado [0.1%] |  |  | 380 | 798.07 | 380 |
| 13 | 1.1.6 | **Estabelecimento do Orçamento** | 9d | 2023-10-02 A | 2023-10-11 A | 11 | 100% |  | 2023-10-02 | 2023-10-11 | 9d |  |  | Gestor do Projeto - Pedro Oliveira | 72h | 72h | 1,610 | 5,145.47 | 1,610 |
| 14 | 1.1.6.1 | Definição do orçamento do projeto com base nos requisitos do cliente. | 7d | 2023-10-02 A | 2023-10-11 A | 11 | 100% |  | 2023-10-02 | 2023-10-11 | 7d |  | start no earlier than 2023-10-02 | Computadores (com monitor, mousse, etc...) [1 Unidade]; Eletricidade [1 Mensal]; Equipamento de Escritório - Geral [1 Unidade]; Ferramenta de Gestão de Sistemas [0.1%]; Serviço de Internet - Empresas [1 Mensal] |  |  | 380 | 2,562.23 | 380 |
| 15 | 1.1.7 | **Elaboração do Plano de Projeto** | 16d | 2023-10-12 A | 2023-10-27 A | 13 | 100% |  | 2023-10-12 | 2023-10-27 | 16d |  |  | Analistas de Requisitos - Rita Pereira [75%]; Desenvolvedores Back-End 01 (Chefe) - Miguel Sousa; Desenvolvedores Front-End 01 (Chefe) - João Costa; Especialista em Segurança - Lars Johansson; Especialistas em Integração de Sistemas - Emily Mitchell; Gestor do Projeto - Pedro Oliveira; Web Designer 01 (Chefe) - Tiago Fernandes | 864h | 864h | 9,388 | 19,716.6 | 9,388 |
| 16 | 1.1.7.1 | Criação de um plano de projeto detalhado que inclui cronograma, orçamento e recursos. | 14d | 2023-10-12 A | 2023-10-27 A | 13 | 100% |  | 2023-10-12 | 2023-10-27 | 12d |  | start no earlier than 2023-10-12 | Computadores (com monitor, mousse, etc...) [1 Unidade]; Eletricidade [1 Mensal]; Equipamento de Escritório - Geral [1 Unidade]; Ferramenta de Gestão de Sistemas [0.1%]; Serviço de Internet - Empresas [1 Mensal] |  |  | 430 | 903.08 | 430 |
| 17 | 1.1.8 | **Elaboração de Documentação Inicial** | 9d | 2023-10-30 A | 2023-11-08 A | 15 | 100% |  | 2023-10-30 | 2023-11-08 | 9d |  |  | Analistas de Requisitos - Rita Pereira [75%]; Especialistas em Integração de Sistemas - Emily Mitchell | 126h | 126h | 1,521 | 3,194.39 | 1,521 |
| 18 | 1.1.8.1 | Início da criação da documentação necessária para a entrega da solução. | 7d | 2023-10-30 A | 2023-11-08 A | 15 | 100% |  | 2023-10-30 | 2023-11-08 | 7d |  | finish no earlier than 2023-11-08 | Computadores (com monitor, mousse, etc...) [1 Unidade]; Eletricidade [1 Mensal]; Equipamento de Escritório - Geral [1 Unidade]; Ferramenta de Gestão de Sistemas [0.1%]; Serviço de Internet - Empresas [1 Mensal] |  |  | 305 | 640.56 | 305 |
| 19 | 1.1.9 | **Desenvolvimento do Plano de Projeto** | 16d | 2023-11-09 A | 2023-11-24 A | 17 | 100% |  | 2023-11-09 | 2023-11-24 | 16d |  |  | Analistas de Requisitos - Rita Pereira [75%]; Desenvolvedores Back-End 01 (Chefe) - Miguel Sousa; Desenvolvedores Front-End 01 (Chefe) - João Costa; Gestor do Projeto - Pedro Oliveira | 480h | 480h | 5,974 | 12,546.55 | 5,974 |
| 20 | 1.1.9.1 | Revisão do plano de projeto com a equipa e ajustes conforme necessário. | 12d | 2023-11-09 A | 2023-11-24 A | 17 | 100% |  | 2023-11-09 | 2023-11-24 | 12d |  | start no earlier than 2023-11-09 | Computadores (com monitor, mousse, etc...) [1 Unidade]; Eletricidade [1 Mensal]; Equipamento de Escritório - Geral [1 Unidade]; Ferramenta de Base de Dados [0.1%]; Ferramenta de Desenvolvimento de Código [0.1%]; Ferramenta de Gestão de Sistemas [0.1%]; Serviço de Internet - Empresas [1 Mensal] |  |  | 630 | 1,323.12 | 630 |
| 21 | 1.1.10 | **Submissão do Plano de Projeto** | 10d | 2023-11-27 A | 2023-12-07 A | 19 | 100% |  | 2023-11-27 | 2023-12-07 | 10d |  |  | Gestor do Projeto - Pedro Oliveira | 80h | 80h | 1,640 | 3,444.31 | 1,640 |
| 22 | 1.1.10.1 | Submissão do plano de projeto ao cliente para revisão e aprovação. | 8d | 2023-11-27 A | 2023-12-07 A | 19 | 100% |  | 2023-11-27 | 2023-12-07 | 8d |  | finish no earlier than 2023-12-07 | Computadores (com monitor, mousse, etc...) [1 Unidade]; Eletricidade [1 Mensal]; Equipamento de Escritório - Geral [1 Unidade]; Serviço de Internet - Empresas [1 Mensal] |  |  | 300 | 630.06 | 300 |
| 23 | 1.2 | **Aprovação do Plano de Projeto:** | 5d | 2023-12-11 A | 2023-12-15 A | 21 | 100% |  | 2023-12-11 | 2023-12-15 | 5d |  |  | Gestor do Projeto - Pedro Oliveira | 40h | 40h | 710 | 1,491.14 | 710 |
| 24 | 1.2.1 | Recebimento da aprovação formal do cliente sobre o plano de projeto. | 5d | 2023-12-11 A | 2023-12-15 A | 21 | 100% |  | 2023-12-11 | 2023-12-15 | 5d |  | start no earlier than 2023-12-11 | Ferramenta de Gestão de Sistemas [0.1%] |  |  | 10 | 21 | 10 |

| ID | WBS | Task | Duration | Start | Finish | Predecessors | Complete | Remaining | Baseline start | Baseline finish | Baseline duration | Total slack | Constraint | Deadline | Resources | Work | Actual work | Cost | Baseline cost | Actual cost |
| --- | --- | --- | --- | --- | --- | --- | --- | --- | --- | --- | --- | --- | --- | --- | --- | --- | --- | --- | --- | --- |
| 25 | 1.3 | **Formação de Pessoal:** | 11d | 2023-12-18 A | 2023-12-29 | 23 | 99% | 0d | 2023-12-18 | 2023-12-29 | 11d | 0d |  | 2023-12-29 | Gestor do Projeto - Pedro Oliveira; Desenvolvedores Back-End 01 (Chefe) - Miguel Sousa; Desenvolvedores Front-End 01 (Chefe) - João Costa; Especialista em Segurança - Lars Johansson; Especialistas em Integração de Sistemas - Emily Mitchell; Web Designer 01 (Chefe) - Tiago Fernandes | 400h | 400h | 5,696 | 12,970.78 | 5,696 |
| 26 | 1.3.1 | **Agendamento de Formação de Pessoal:** | 3d | 2023-12-18 A | 2023-12-20 A | 24 | 100% |  | 2023-12-18 | 2023-12-20 | 3d |  |  |  | Gestor do Projeto - Pedro Oliveira | 24h | 24h | 740 | 1,554.14 | 740 |
| 27 | 1.3.1.1 | Definição de datas, horários e local para as sessões de formação. | 3d | 2023-12-18 A | 2023-12-20 A | 24 | 100% |  | 2023-12-18 | 2023-12-20 | 3d |  | start no earlier than 2023-12-18 |  | Computadores (com monitor, mousse, etc...) [1 Unidade]; Eletricidade [1 Mensal]; Equipamento de Escritório - Geral [1 Unidade]; Ferramenta de Gestão de Sistemas [0.1%]; Serviço de Internet - Empresas [1 Mensal] |  |  | 380 | 798.07 | 380 |
| 28 | 1.3.2 | **Formação da equipa** | 8d | 2023-12-21 A | 2023-12-29 A | 26 | 100% |  | 2023-12-21 | 2023-12-29 | 8d |  |  |  | Desenvolvedores Back-End 01 (Chefe) - Miguel Sousa; Especialistas em Integração de Sistemas - Emily Mitchell; Web Designer 01 (Chefe) - Tiago Fernandes; Especialista em Segurança - Lars Johansson; Desenvolvedores Front-End 01 (Chefe) - João Costa | 288h | 288h | 3,636 | 8,644.39 | 3,636 |
| 29 | 1.3.2.1 | Desenvolvimento de material de formação, como manuais, guias e apresentações. | 2d | 2023-12-21 A | 2023-12-22 A | 27 | 100% |  | 2023-12-21 | 2023-12-22 | 2d |  | finish no earlier than 2023-12-22 |  | Computadores (com monitor, mousse, etc...) [1 Unidade]; Eletricidade [1 Mensal]; Equipamento de Escritório - Geral [1 Unidade]; Ferramenta de Base de Dados [0.1%]; Ferramenta de Desenvolvimento de Código [0.1%]; Ferramenta de Gestão de Sistemas [0.1%]; Ferramenta de Segurança Informática [0.1%]; Ferramentas de Teste [0.1%]; Serviço de Hospedagem [0.1%]; Serviço de Internet - Empresas [1 Mensal]; Software de Sistema Integrado [0.1%] |  |  | 680 | 1,428.13 | 680 |
| 30 | 1.3.2.2 | Formação da equipa de manutenção do sistema para garantir que esta possa gerir e desenvolver a solução com eficiência. | 4d | 2023-12-26 A | 2023-12-29 A | 29 | 100% |  | 2023-12-26 | 2023-12-29 | 4d |  | finish no earlier than 2023-12-29 |  | Computadores (com monitor, mousse, etc...) [1 Unidade]; Eletricidade [1 Mensal]; Equipamento de Escritório - Geral [1 Unidade]; Serviço de Internet - Empresas [1 Mensal] |  |  | 316 | 1,671.75 | 316 |
| 31 | 1.4 | **Desenvolvimento, Implementação e Entrega do Projeto:** | 175d | 2024-01-02 A | 2024-06-30 | 23, 24 | 99% | 0d | 2024-01-02 | 2024-06-30 | 174.43d | 0d |  |  | Analistas de Requisitos - Rita Pereira [75%]; Desenvolvedores Back-End 01 (Chefe) - Miguel Sousa; Desenvolvedores Back-End 02 - Tiago Karchenko; Desenvolvedores Back-End 03 - William Ferreira; Desenvolvedores Front-End 01 (Chefe) - João Costa; Desenvolvedores Front-End 02 - Pedro Soares; Desenvolvedores Front-End 03 - Pedro Almeida; Especialista em Segurança - Lars Johansson; Especialistas em Integração de Sistemas - Emily Mitchell; Gestor do Projeto - Pedro Oliveira; Web Designer 01 (Chefe) - Tiago Fernandes; Web Designer 02 - Ana Costa | 4310.7h | 4310.7h | 46,765.6 | 103,702.43 | 46,727.6 |
| 32 | 1.4.1 | **Design e Arquitetura** | 23d | 2024-01-02 A | 2024-01-24 A | 28 | 100% |  | 2024-01-02 | 2024-01-24 | 23d |  |  |  | Desenvolvedores Back-End 01 (Chefe) - Miguel Sousa; Desenvolvedores Back-End 02 - Tiago Karchenko; Desenvolvedores Back-End 03 - William Ferreira; Desenvolvedores Front-End 01 (Chefe) - João Costa; Desenvolvedores Front-End 02 - Pedro Soares; Desenvolvedores Front-End 03 - Pedro Almeida; Especialistas em Integração de Sistemas - Emily Mitchell; Web Designer 01 (Chefe) - Tiago Fernandes; Web Designer 02 - Ana Costa | 1656h | 1656h | 14,024 | 30,587.19 | 14,024 |
| 33 | 1.4.1.1 | Desenvolvimento da arquitetura do sistema, design de interface do utilizador e especificação técnica. | 8d | 2024-01-02 A | 2024-01-11 A | 30 | 100% |  | 2024-01-02 | 2024-01-11 | 8d |  | start no earlier than 2024-01-01 |  | Computadores (com monitor, mousse, etc...) [1 Unidade]; Eletricidade [1 Mensal]; Equipamento de Escritório - Geral [1 Unidade]; Ferramenta de Desenvolvimento de Código [0.1%]; Ferramenta de Gestão de Sistemas [0.1%]; Serviço de Internet - Empresas [1 Mensal] |  |  | 530 | 1,113.1 | 530 |
| 34 | 1.4.1.2 | Início da primeira iteração ágil (sprint) com um foco específico em funcionalidades priorizadas. | 9d | 2024-01-12 A | 2024-01-24 A | 33 | 100% |  | 2024-01-12 | 2024-01-24 | 9d |  | finish no earlier than 2024-01-24 |  | Eletricidade [1 Mensal]; Equipamento de Escritório - Geral [1 Unidade]; Serviço de Internet - Empresas [1 Mensal] |  |  | 430 | 2,037.19 | 430 |
| 35 | 1.4.2 | **Desenvolvimento Back-End** | 39d | 2024-01-25 A | 2024-03-04 A | 30 | 100% |  | 2024-01-25 | 2024-03-04 | 38.88d |  |  |  | Desenvolvedores Back-End 01 (Chefe) - Miguel Sousa; Desenvolvedores Back-End 02 - Tiago Karchenko; Desenvolvedores Back-End 03 - William Ferreira | 936h | 936h | 9,516 | 19,985.42 | 9,516 |
| 36 | 1.4.2.1 | Implementação das funcionalidades de servidor, banco de dados e lógica de negócios. | 3d | 2024-01-25 A | 2024-01-27 A | 34 | 100% |  | 2024-01-25 | 2024-01-27 | 3d |  |  |  | Computadores (com monitor, mousse, etc...) [1 Unidade]; Eletricidade [1 Mensal]; Equipamento de Escritório - Geral [1 Unidade]; Ferramenta de Desenvolvimento de Código [0.1%]; Serviço de Internet - Empresas [1 Mensal] |  |  | 780 | 1,638.15 | 780 |
| 37 | 1.4.2.2 | Início de nova iteração ágil, com base nas lições aprendidas na sprint anterior. | 3.88d | 2024-01-28 A | 2024-01-31 A | 36 | 100% |  | 2024-01-28 | 2024-01-31 | 3.88d |  |  |  | Computadores (com monitor, mousse, etc...) [1 Unidade]; Eletricidade [1 Mensal]; Equipamento de Escritório - Geral [1 Unidade]; Ferramenta de Desenvolvimento de Código [0.1%]; Serviço de Internet - Empresas [1 Mensal] |  |  | 780 | 1,638.15 | 780 |
| 38 | 1.4.2.3 | Sprints de Forma Ágil | 14d | 2024-02-16 A | 2024-03-04 A | 37 | 100% |  | 2024-01-31 | 2024-03-04 | 28d |  | finish no earlier than 2024-03-04 |  | Computadores (com monitor, mousse, etc...) [1 Unidade]; Eletricidade [1 Mensal]; Equipamento de Escritório - Geral [1 Unidade]; Ferramenta de Desenvolvimento de Código [0.1%]; Serviço de Internet - Empresas [1 Mensal]; Ferramenta de Base de Dados [0.1%]; Ferramenta de Gestão de Sistemas [0.1%] |  |  | 780 | 1,638.15 | 780 |
| 39 | 1.4.3 | **Desenvolvimento Front-end** | 16.75d | 2024-03-05 A | 2024-03-21 A | 35 | 100% |  | 2024-03-04 | 2024-03-21 | 16.75d |  |  |  | Desenvolvedores Front-End 01 (Chefe) - João Costa; Desenvolvedores Front-End 02 - Pedro Soares; Desenvolvedores Front-End 03 - Pedro Almeida | 402h | 402h | 5,010 | 10,521.96 | 5,010 |
| 40 | 1.4.3.1 | Implementação da parte visual do site, incluindo layout, design gráfico e interatividade. | 3d | 2024-03-05 A | 2024-03-07 A | 38 | 100% |  | 2024-03-04 | 2024-03-07 | 3d |  | start no earlier than 2024-02-13 |  | Computadores (com monitor, mousse, etc...) [1 Unidade]; Eletricidade [1 Mensal]; Equipamento de Escritório - Geral [1 Unidade]; Ferramenta de Desenvolvimento de Código [0.1%]; Ferramenta de Gestão de Sistemas [0.1%]; Serviço de Internet - Empresas [1 Mensal]; Ferramenta de Base de Dados [0.1%] |  |  | 780 | 1,638.15 | 780 |
| 41 | 1.4.3.2 | Continuação da implementação ágil com novas funcionalidades a serem desenvolvidas. | 3d | 2024-03-08 A | 2024-03-10 A | 40 | 100% |  | 2024-03-07 | 2024-03-10 | 3d |  | start no earlier than 2024-02-16 |  | Computadores (com monitor, mousse, etc...) [1 Unidade]; Eletricidade [1 Mensal]; Equipamento de Escritório - Geral [1 Unidade]; Ferramenta de Desenvolvimento de Código [0.1%]; Ferramenta de Gestão de Sistemas [0.1%]; Serviço de Internet - Empresas [1 Mensal] |  |  | 980 | 2,058.19 | 980 |
| 42 | 1.4.3.3 | Nova iteração ágil com ênfase nas funcionalidades restantes. | 8.75d | 2024-03-11 A | 2024-03-21 A | 41 | 100% |  | 2024-03-10 | 2024-03-21 | 8.75d |  | finish no earlier than 2024-02-29 |  | Computadores (com monitor, mousse, etc...) [1 Unidade]; Eletricidade [1 Mensal]; Equipamento de Escritório - Geral [1 Unidade]; Ferramenta de Desenvolvimento de Código [0.1%]; Ferramenta de Gestão de Sistemas [0.1%]; Serviço de Internet - Empresas [1 Mensal] |  |  | 436 | 915.68 | 436 |
| 43 | 1.4.4 | **Integração de Sistemas** | 28.75d | 2024-03-21 A | 2024-04-20 A | 39 | 100% |  | 2024-03-21 | 2024-04-20 | 28.75d |  |  |  | Especialistas em Integração de Sistemas - Emily Mitchell | 230h | 230h | 2,160 | 6,283.77 | 2,160 |
| 44 | 1.4.4.1 | Integração das funcionalidades desenvolvidas em relação ao sistema principal. | 22.25d | 2024-03-21 A | 2024-04-20 A | 42 | 100% |  | 2024-03-21 | 2024-04-20 | 13d |  | finish no earlier than 2024-03-19 |  | Computadores (com monitor, mousse, etc...) [1 Unidade]; Eletricidade [1 Mensal]; Equipamento de Escritório - Geral [1 Unidade]; Serviço de Internet - Empresas [1 Mensal] |  |  | 320 | 2,419.42 | 320 |
| 45 | 1.4.5 | **Testes Unitários** | 5.3d | 2024-04-20 A | 2024-04-26 A | 43 | 100% |  | 2024-04-20 | 2024-04-26 | 5.3d |  |  |  | Desenvolvedores Back-End 01 (Chefe) - Miguel Sousa; Desenvolvedores Front-End 01 (Chefe) - João Costa; Desenvolvedores Back-End 02 - Tiago Karchenko; Desenvolvedores Back-End 03 - William Ferreira; Desenvolvedores Front-End 02 - Pedro Soares; Desenvolvedores Front-End 03 - Pedro Almeida | 254.4h | 254.4h | 2,625.6 | 5,514.26 | 2,625.6 |
| 46 | 1.4.5.1 | Realização de testes de unidade em cada componente do sistema para garantir o funcionamento correto. | 3.3d | 2024-04-20 A | 2024-04-26 A | 44 | 100% |  | 2024-04-20 | 2024-04-26 | 3.3d |  | start no earlier than 2024-03-20 |  | Computadores (com monitor, mousse, etc...) [1 Unidade]; Eletricidade [1 Mensal]; Equipamento de Escritório - Geral [1 Unidade]; Ferramentas de Teste [0.1%]; Serviço de Internet - Empresas [1 Mensal] |  |  | 760 | 1,596.15 | 760 |
| 47 | 1.4.6 | **Testes de Integração** | 15d | 2024-04-26 A | 2024-05-12 A | 45 | 100% |  | 2024-04-26 | 2024-05-12 | 15d |  |  |  | Especialistas em Integração de Sistemas - Emily Mitchell | 180h | 180h | 2,856 | 6,082.16 | 2,856 |
| 48 | 1.4.6.1 | Procuram garantir que todas as funcionalidades foram implementadas com sucesso. | 5d | 2024-04-26 A | 2024-05-02 A | 46 | 100% |  | 2024-04-26 | 2024-05-02 | 5d |  | start no earlier than 2024-04-04 |  | Computadores (com monitor, mousse, etc...) [1 Unidade]; Eletricidade [1 Mensal]; Equipamento de Escritório - Geral [1 Unidade]; Ferramentas de Teste [0.1%]; Serviço de Internet - Empresas [1 Mensal] |  |  | 736 | 1,629.75 | 736 |
| 49 | 1.4.6.2 | Conclusão do desenvolvimento, incluindo ajustes finais e otimizações. | 10d | 2024-05-02 A | 2024-05-12 A | 48 | 100% |  | 2024-05-02 | 2024-05-12 | 10d |  | finish no earlier than 2024-04-26 |  | Computadores (com monitor, mousse, etc...) [1 Unidade]; Eletricidade [1 Mensal]; Equipamento de Escritório - Geral [1 Unidade]; Especialistas em Integração de Sistemas - Emily Mitchell [75%]; Ferramenta de Base de Dados [0.1%]; Ferramenta de Desenvolvimento de Código [0.1%]; Ferramenta de Gestão de Sistemas [0.1%]; Ferramentas de Teste [0.1%]; Serviço de Hospedagem [0.1%]; Serviço de Internet - Empresas [1 Mensal]; Software de Sistema Integrado [0.1%] | 60h | 60h | 1,160 | 2,436.22 | 1,160 |

| ID | WBS | Task | Type | Duration | Start | Finish | Predecessors | Complete | Remaining | Baseline start | Baseline finish | Baseline duration | Total slack | Free slack | Constraint | Resources | Work | Actual work | Cost | Baseline cost | Actual cost |
| --- | --- | --- | --- | --- | --- | --- | --- | --- | --- | --- | --- | --- | --- | --- | --- | --- | --- | --- | --- | --- | --- |
| 50 | 1.4.7 | **Testes de Regressão** |  | 20.75d | 2024-05-12 A | 2024-06-03 A | 47 | 100% |  | 2024-05-12 | 2024-06-03 | 20.75d |  |  |  | Especialistas em Integração de Sistemas - Emily Mitchell | 166h | 166h | 2,338 | 7,430.48 | 2,338 |
| 51 | 1.4.7.1 | Testes para garantir que as alterações ou correções não afetaram negativamente as funcionalidades existentes. |  | 18.75d | 2024-05-12 A | 2024-06-01 A | 49 | 100% |  | 2024-05-12 | 2024-06-01 | 18.75d |  |  | start no earlier than 2024-04-29 | Computadores (com monitor, mousse, etc...) [1 Unidade]; Eletricidade [1 Mensal]; Equipamento de Escritório - Geral [1 Unidade]; Serviço de Internet - Empresas [1 Mensal] |  |  | 580 | 3,738.34 | 580 |
| 52 | 1.4.7.2 | Realização de testes com a participação do cliente para garantir que os requisitos sejam atendidos. |  | 2d | 2024-06-01 A | 2024-06-03 A | 51 | 100% |  | 2024-06-01 | 2024-06-03 | 2d |  |  | finish no earlier than 2024-05-13 | Computadores (com monitor, mousse, etc...) [1 Unidade]; Eletricidade [1 Mensal]; Equipamento de Escritório - Geral [1 Unidade]; Ferramentas de Teste [0.1%]; Serviço de Internet - Empresas [1 Mensal] |  |  | 430 | 903.08 | 430 |
| 53 | 1.4.8 | **Ajustes e Otimização de Escalabilidade e Segurança** |  | 10d | 2024-06-03 A | 2024-06-14 A | 50 | 100% |  | 2024-06-03 | 2024-06-14 | 10d |  |  |  | Especialista em Segurança - Lars Johansson; Especialistas em Integração de Sistemas - Emily Mitchell | 160h | 160h | 2,480 | 5,208.48 | 2,480 |
| 54 | 1.4.8.1 | Avaliação de carga e escalabilidade. |  | 4d | 2024-06-03 A | 2024-06-07 A | 52 | 100% |  | 2024-06-03 | 2024-06-07 | 4d |  |  | finish no earlier than 2024-05-17 | Computadores (com monitor, mousse, etc...) [1 Unidade]; Eletricidade [1 Mensal]; Equipamento de Escritório - Geral [1 Unidade]; Ferramenta de Segurança Informática [0.1%]; Serviço de Internet - Empresas [1 Mensal] |  |  | 380 | 798.07 | 380 |
| 55 | 1.4.8.2 | Avaliação da segurança do sistema para identificar vulnerabilidades e riscos de segurança. |  | 4d | 2024-06-07 A | 2024-06-12 A | 54 | 100% |  | 2024-06-07 | 2024-06-12 | 4d |  |  | finish no earlier than 2024-05-23 | Computadores (com monitor, mousse, etc...) [1 Unidade]; Eletricidade [1 Mensal]; Equipamento de Escritório - Geral [1 Unidade]; Ferramenta de Segurança Informática [0.1%]; Serviço de Internet - Empresas [1 Mensal] |  |  | 330 | 693.06 | 330 |
| 56 | 1.4.8.3 | Identificação e correção de erros e defeitos identificados durante as alíneas anteriores. |  | 2d | 2024-06-12 A | 2024-06-14 A | 55 | 100% |  | 2024-06-12 | 2024-06-14 | 2d |  |  | start no earlier than 2024-05-24 | Computadores (com monitor, mousse, etc...) [1 Unidade]; Eletricidade [1 Mensal]; Equipamento de Escritório - Geral [1 Unidade]; Ferramentas de Teste [0.1%]; Serviço de Internet - Empresas [1 Mensal] |  |  | 330 | 693.06 | 330 |
| 57 | 1.4.9 | **Testes de Aceitação do Cliente** |  | 6d | 2024-06-14 A | 2024-06-20 A | 53 | 100% |  | 2024-06-14 | 2024-06-20 | 6d |  |  |  | Especialistas em Integração de Sistemas - Emily Mitchell; Analistas de Requisitos - Rita Pereira [75%]; Gestor do Projeto - Pedro Oliveira | 132h | 132h | 2,124 | 4,460.81 | 2,124 |
| 58 | 1.4.9.1 | Testes conduzidos com a participação do cliente para garantir que os requisitos sejam atendidos. |  | 4d | 2024-06-14 A | 2024-06-18 A | 56 | 100% |  | 2024-06-14 | 2024-06-18 | 4d |  |  | start no earlier than 2024-05-28 | Computadores (com monitor, mousse, etc...) [1 Unidade]; Eletricidade [1 Mensal]; Equipamento de Escritório - Geral [1 Unidade]; Ferramentas de Teste [0.1%]; Serviço de Internet - Empresas [1 Mensal] |  |  | 330 | 693.06 | 330 |
| 59 | 1.4.9.2 | Realização de testes abrangentes e avaliação geral do sistema antes da entrega. |  | 2d | 2024-06-18 A | 2024-06-20 A | 58 | 100% |  | 2024-06-18 | 2024-06-20 | 2d |  |  | finish no earlier than 2024-06-05 | Computadores (com monitor, mousse, etc...) [1 Unidade]; Eletricidade [1 Mensal]; Equipamento de Escritório - Geral [1 Unidade]; Ferramentas de Teste [0.1%]; Serviço de Internet - Empresas [1 Mensal] |  |  | 330 | 693.06 | 330 |
| 60 | 1.4.10 | **Preparação para Entrega** |  | 6d | 2024-06-20 A | 2024-06-26 A | 57 | 100% |  | 2024-06-20 | 2024-06-26 | 6d |  |  |  | Especialistas em Integração de Sistemas - Emily Mitchell; Gestor do Projeto - Pedro Oliveira; Analistas de Requisitos - Rita Pereira [75%] | 132h | 132h | 2,096 | 4,402 | 2,096 |
| 61 | 1.4.10.1 | Preparação para a entrega do sistema, incluindo a documentação. |  | 4d | 2024-06-20 A | 2024-06-24 A | 59 | 100% |  | 2024-06-20 | 2024-06-24 | 4d |  |  | finish no earlier than 2024-06-11 | Computadores (com monitor, mousse, etc...) [1 Unidade]; Eletricidade [1 Mensal]; Equipamento de Escritório - Geral [1 Unidade]; Ferramenta de Gestão de Sistemas [0.1%]; Serviço de Internet - Empresas [1 Mensal]; Software de Sistema Integrado [0.1%] |  |  | 320 | 672.06 | 320 |
| 62 | 1.4.10.2 | Revisão e finalização de toda a documentação necessária para a entrega, incluindo manuais de utilizador, documentação técnica e outros materiais. |  | 2d | 2024-06-24 A | 2024-06-26 A | 61 | 100% |  | 2024-06-24 | 2024-06-26 | 2d |  |  | finish no earlier than 2024-06-14 | Computadores (com monitor, mousse, etc...) [1 Unidade]; Eletricidade [1 Mensal]; Equipamento de Escritório - Geral [1 Unidade]; Ferramenta de Gestão de Sistemas [0.1%]; Serviço de Internet - Empresas [1 Mensal]; Software de Sistema Integrado [0.1%] |  |  | 312 | 655.26 | 312 |
| 63 | 1.4.11 | **Entrega do Projeto** |  | 4.45d | 2024-06-26 A | 2024-06-30 | 60 | 99% | 0d | 2024-06-26 | 2024-06-30 | 4d | 0d |  |  | Analistas de Requisitos - Rita Pereira [75%]; Gestor do Projeto - Pedro Oliveira | 62.3h | 62.3h | 1,536 | 3,225.89 | 1,498 |
| 64 | 1.4.11.1 | Conclusão da fase de desenvolvimento e implementação, com a entrega da solução ao cliente. |  | 1d | 2024-06-26 A | 2024-06-27 A | 62 | 100% |  | 2024-06-26 | 2024-06-27 | 1d |  |  | finish no earlier than 2024-06-17 | Computadores (com monitor, mousse, etc...) [1 Unidade]; Eletricidade [1 Mensal]; Equipamento de Escritório - Geral [1 Unidade]; Ferramenta de Gestão de Sistemas [0.1%]; Serviço de Internet - Empresas [1 Mensal]; Software de Sistema Integrado [0.1%] |  |  | 317 | 665.76 | 317 |
| 65 | 1.4.11.2 | Acompanhamento do cliente para garantir que este saiba como usar efetivamente a solução. | milestone | 0d | 2024-06-28 | 2024-06-28 | 64 |  |  | 2024-06-28 | 2024-06-28 | 0d | 2d | 1d | finish no earlier than 2024-06-28 | Ferramenta de Gestão de Sistemas [0.1%] |  |  | 24 | 50.4 |  |
| 66 | 1.4.11.3 | Obtenção da aprovação formal do cliente para a solução entregue. | milestone | 0d | 2024-06-29 | 2024-06-29 | 65 |  |  | 2024-06-29 | 2024-06-29 | 0d | 1d |  | finish no earlier than 2024-06-29 | Ferramenta de Gestão de Sistemas [0.1%] |  |  | 14 | 29.4 |  |
| 67 | 1.4.11.4 | Finalização de todas as atividades do projeto, incluindo a documentação de encerramento e a entrega de todos os artefactos ao cliente. Finalizado até 01 de Julho de 2024 |  | 2d | 2024-06-29 A | 2024-06-30 A | 66 | 100% |  | 2024-06-29 | 2024-06-30 | 1d |  |  | finish no earlier than 2024-06-30 | Computadores (com monitor, mousse, etc...) [1 Unidade]; Eletricidade [1 Mensal]; Equipamento de Escritório - Geral [1 Unidade]; Ferramenta de Gestão de Sistemas [0.1%]; Serviço de Internet - Empresas [1 Mensal]; Software de Sistema Integrado [0.1%] |  |  | 380 | 798.07 | 380 |
